# WIN Belize Project

Schedule from MS Project, 2023-10-02 to 2024-01-02.

## Calendars

- Standard: Mon-Fri 08:00-12:00, 13:00-17:00; Sat-Sun off. Exceptions (off unless hours are given): 2023-11-10 (Veteran's Day), 2023-11-22 to 2023-11-24 (Thanksgiving), 2023-12-25 (Christmas Day), 2024-01-01 (New Year's Day).

## Schedule

| ID | WBS | Task | Duration | Start | Finish | Predecessors | Total slack | Free slack | Constraint |
| --- | --- | --- | --- | --- | --- | --- | --- | --- | --- |
| 1 | 1 | **Project Initiation** | 1d | 2023-10-02 | 2023-10-02 |  | 4d | 0d |  |
| 2 | 1.1 | Define Project Scope and Objectives | 0.5d | 2023-10-02 | 2023-10-02 |  | 4d | 0d | start no earlier than 2023-10-02 |
| 3 | 1.2 | Identify Project Stakeholders | 0.5d | 2023-10-02 | 2023-10-02 | 2 | 4d | 0d | finish no earlier than 2023-10-02 |
| 4 | 2 | **Requirements Gathering Phase** | 3.75d | 2023-10-03 | 2023-10-06 | 1 | 4d | 0d |  |
| 5 | 2.1 | **Define Data Collection Methodologies** | 2d | 2023-10-03 | 2023-10-04 |  | 4d | 0d |  |
| 6 | 2.1.1 | Conduct Interviews with Stakeholders | 1d | 2023-10-03 | 2023-10-03 |  | 4d | 0d | start no earlier than 2023-10-02 |
| 7 | 2.1.2 | Collect Survey Responses | 1d | 2023-10-04 | 2023-10-04 | 6 | 4d | 0d | start no earlier than 2023-10-03 |
| 8 | 2.2 | **Analyze Legal and Compliance Requirements** | 1.75d | 2023-10-05 | 2023-10-06 | 5 | 4d | 0d |  |
| 9 | 2.2.1 | Review Privacy Regulations | 1d | 2023-10-05 | 2023-10-05 |  | 4d | 0d | start no earlier than 2023-10-04 |
| 10 | 2.2.2 | Review Security Standards | 0.75d | 2023-10-06 | 2023-10-06 | 9 | 4d | 0d | finish no earlier than 2023-10-05 |
| 11 | 3 | **Requirements Analysis and Documentation** | 2.75d | 2023-10-06 | 2023-10-11 | 4 | 4d | 0d |  |
| 12 | 3.1 | **Analyze Stakeholder Input** | 0.75d | 2023-10-06 | 2023-10-09 |  | 4d | 0d |  |
| 13 | 3.1.1 | Analyze Interview Data | 0.75d | 2023-10-06 | 2023-10-09 |  | 4d | 0d | finish no earlier than 2023-10-06 |
| 14 | 3.1.2 | Analyze Survey Data | 0.75d | 2023-10-06 | 2023-10-09 | 7 | 4d | 0d | finish no earlier than 2023-10-06 |
| 15 | 3.2 | Document Functional Requirements | 2d | 2023-10-09 | 2023-10-11 | 12 | 4d | 0d | start no earlier than 2023-10-06 |
| 16 | 4 | **Database Design and Implementation** | 6.5d | 2023-10-11 | 2023-10-19 | 11 | 4d | 0d |  |
| 17 | 4.1 | **Define Database Schema** | 2.5d | 2023-10-11 | 2023-10-13 |  | 4d | 0d |  |
| 18 | 4.1.1 | Define Tables and Relationships | 1.5d | 2023-10-11 | 2023-10-12 |  | 4d | 0d | finish no earlier than 2023-10-12 |
| 19 | 4.1.2 | Define Data Entry Rules | 1d | 2023-10-13 | 2023-10-13 | 18 | 4d | 0d | start no earlier than 2023-10-12 |
| 20 | 4.2 | **Database Implementation** | 4d | 2023-10-16 | 2023-10-19 | 17 | 4d | 0d |  |
| 21 | 4.2.1 | Create Database Tables | 2d | 2023-10-16 | 2023-10-17 |  | 4d | 0d | start no earlier than 2023-10-13 |
| 22 | 4.2.2 | Implement Data Entry Rules | 2d | 2023-10-18 | 2023-10-19 | 21 | 4d | 0d | start no earlier than 2023-10-17 |
| 23 | 5 | **User Interface Design and Development** | 7d | 2023-10-20 | 2023-10-30 | 16 | 3d | 0d |  |
| 24 | 5.1 | **Design User Interface Mockups** | 3d | 2023-10-20 | 2023-10-24 |  | 4d | 0d |  |
| 25 | 5.1.1 | Create Mockups for Main Pages | 2d | 2023-10-20 | 2023-10-23 |  | 4d | 0d | start no earlier than 2023-10-19 |
| 26 | 5.1.2 | Gather Feedback on Mockups | 1d | 2023-10-24 | 2023-10-24 | 25 | 4d | 0d | start no earlier than 2023-10-23 |

| ID | WBS | Task | Duration | Start | Finish | Predecessors | Total slack | Free slack | Constraint |
| --- | --- | --- | --- | --- | --- | --- | --- | --- | --- |
| 27 | 5.2 | **Develop User Interface** | 4d | 2023-10-25 | 2023-10-30 | 24 | 3d | 0d |  |
| 28 | 5.2.1 | Implement Main Page UI | 2d | 2023-10-25 | 2023-10-26 |  | 4d | 0d | start no earlier than 2023-10-25 |
| 29 | 5.2.2 | Implement Feedback-Driven Re visions | 1d | 2023-10-30 | 2023-10-30 | 28 | 3d | 0d | start no earlier than 2023-10-30 |
| 30 | 6 | **Backend Development** | 11d | 2023-11-01 | 2023-11-16 | 23 | 0d |  |  |
| 31 | 6.1 | **Develop Core System Logic** | 4d | 2023-11-01 | 2023-11-06 |  | 2d | 0d |  |
| 32 | 6.1.1 | Implement User Authentication | 2d | 2023-11-01 | 2023-11-02 |  | 2d | 0d | start no earlier than 2023-11-01 |
| 33 | 6.1.2 | Implement Data Handling Functions | 2d | 2023-11-03 | 2023-11-06 | 32 | 2d | 0d | start no earlier than 2023-11-03 |
| 34 | 6.2 | **Integrate Database Functionality** | 3d | 2023-11-08 | 2023-11-13 | 31 | 0d |  |  |
| 35 | 6.2.1 | Integrate User Data Handling | 1d | 2023-11-08 | 2023-11-08 |  | 1d | 0d | start no earlier than 2023-11-08 |
| 36 | 6.2.2 | Integrate Reporting Functionality | 1d | 2023-11-13 | 2023-11-13 | 35 | 0d |  | start no earlier than 2023-11-10 |
| 37 | 6.3 | Implement Security Measures | 3d | 2023-11-14 | 2023-11-16 | 34 | 0d |  | start no earlier than 2023-11-13 |
| 38 | 7 | **Integration and Testing** | 6d | 2023-11-17 | 2023-11-29 | 30 | 0d |  |  |
| 39 | 7.1 | **Integrate UI, Backend, and Database** | 3d | 2023-11-17 | 2023-11-21 |  | 0d |  |  |
| 40 | 7.1.1 | Integrate User Interface and Backend | 2d | 2023-11-17 | 2023-11-20 |  | 0d |  | start no earlier than 2023-11-16 |
| 41 | 7.1.2 | Integrate Database Functionality | 1d | 2023-11-21 | 2023-11-21 | 40 | 0d |  | start no earlier than 2023-11-20 |
| 42 | 7.2 | **Conduct System Testing** | 2d | 2023-11-27 | 2023-11-28 | 39 | 0d |  |  |
| 43 | 7.2.1 | Develop Testing Scenarios | 1d | 2023-11-27 | 2023-11-27 |  | 0d |  | start no earlier than 2023-11-22 |
| 44 | 7.2.2 | Perform System Testing | 1d | 2023-11-28 | 2023-11-28 | 43 | 0d |  | start no earlier than 2023-11-23 |
| 45 | 7.3 | Bug Fixing and Final Testing | 1d | 2023-11-29 | 2023-11-29 | 42 | 0d |  | start no earlier than 2023-11-24 |
| 46 | 8 | **Security and Compliance Implementation** | 4d | 2023-11-30 | 2023-12-05 | 38 | 0d |  |  |
| 47 | 8.1 | Data Encryption and Security Measures | 3d | 2023-11-30 | 2023-12-04 |  | 0d |  | start no earlier than 2023-11-27 |
| 48 | 8.2 | Compliance with Privacy Regulations | 1d | 2023-12-05 | 2023-12-05 | 47 | 0d |  | start no earlier than 2023-11-30 |
| 49 | 9 | **Training Material Development** | 2d | 2023-12-06 | 2023-12-07 | 46 | 0d |  |  |
| 50 | 9.1 | Create Training Modules | 1d | 2023-12-06 | 2023-12-06 |  | 0d |  | start no earlier than 2023-12-01 |
| 51 | 9.2 | Develop User Guides | 1d | 2023-12-07 | 2023-12-07 | 50 | 0d |  | start no earlier than 2023-12-04 |

| ID | WBS | Task | Duration | Start | Finish | Predecessors | Total slack | Constraint |
| --- | --- | --- | --- | --- | --- | --- | --- | --- |
| 52 | 10 | **User Training** | 4d | 2023-12-08 | 2023-12-13 | 49 | 0d |  |
| 53 | 10.1 | Develop Training Schedule | 1d | 2023-12-08 | 2023-12-08 |  | 0d | start no earlier than 2023-12-06 |
| 54 | 10.2 | Conduct Training Sessions | 3d | 2023-12-11 | 2023-12-13 | 53 | 0d | start no earlier than 2023-12-07 |
| 55 | 11 | **System Rollout** | 2d | 2023-12-14 | 2023-12-15 | 52 | 0d |  |
| 56 | 11.1 | Pre-Rollout Checklist | 1d | 2023-12-14 | 2023-12-14 |  | 0d | start no earlier than 2023-12-13 |
| 57 | 11.2 | Launch System to Users | 1d | 2023-12-15 | 2023-12-15 | 56 | 0d | start no earlier than 2023-12-14 |
| 58 | 12 | **Project Closure and Evaluation** | 2d | 2023-12-18 | 2023-12-19 | 55 | 0d |  |
| 59 | 12.1 | Evaluate Project Success | 1d | 2023-12-18 | 2023-12-18 |  | 0d | start no earlier than 2023-12-15 |
| 60 | 12.2 | Document Lessons Learned | 1d | 2023-12-19 | 2023-12-19 | 59 | 0d | start no earlier than 2023-12-18 |
| 61 | 13 | **Documentation and Knowledge Transfer** | 4d | 2023-12-20 | 2023-12-26 | 58 | 0d |  |
| 62 | 13.1 | Create User Manuals | 2d | 2023-12-20 | 2023-12-21 |  | 0d | start no earlier than 2023-12-19 |
| 63 | 13.2 | Develop Technical Documentation | 2d | 2023-12-22 | 2023-12-26 | 62 | 0d | start no earlier than 2023-12-21 |
| 64 | 14 | **Post-Implementation Review** | 2d | 2023-12-27 | 2023-12-28 | 61 | 0d |  |
| 65 | 14.1 | Gather User Feedback | 1d | 2023-12-27 | 2023-12-27 |  | 0d | start no earlier than 2023-12-26 |
| 66 | 14.2 | Evaluate System Performance | 1d | 2023-12-28 | 2023-12-28 | 65 | 0d | start no earlier than 2023-12-27 |
| 67 | 15 | **Project Closure and Reporting** | 2d | 2023-12-29 | 2024-01-02 | 64 | 0d |  |
| 68 | 15.1 | Finalize Project Documentation | 1d | 2023-12-29 | 2023-12-29 |  | 0d | start no earlier than 2023-12-29 |
| 69 | 15.2 | Generate Project Report | 1d | 2024-01-02 | 2024-01-02 | 68 | 0d | start no earlier than 2024-01-01 |
